Schedule from MS Project, 2017-07-03 to 2017-10-10, costs in ¥.

## Calendars

- 标准: Mon-Fri 08:00-12:00, 13:00-17:00; Sat-Sun off.

## Resources

| Resource | Rate |
| --- | --- |
| 壮工 | 25 |
| 技工 | 37.5 |

## Schedule

| ID | WBS | Task | Type | Duration | Start | Finish | Predecessors | Total slack | Free slack | Constraint | Resources | Work | Cost |
| --- | --- | --- | --- | --- | --- | --- | --- | --- | --- | --- | --- | --- | --- |
| 1 | 1 | **道路及配套工程** |  | 71.95d | 2017-07-03 | 2017-10-10 |  | 0d |  |  |  | 13704h | 893,600 |
| 2 | 1.1 | **准备工作** |  | 22.45d | 2017-07-03 | 2017-08-02 |  | 0d |  |  |  | 1248h | 89,700 |
| 3 | 1.1.1 | 预算报批 |  | 5d | 2017-07-03 | 2017-07-07 |  | 0d |  | start no earlier than 2017-07-03 |  |  | 5,000 |
| 4 | 1.1.2 | 对外公告 |  | 10d | 2017-07-10 | 2017-07-21 | 3 | 0d |  |  |  |  | 1,500 |
| 5 | 1.1.3 | 开走路上停留的车辆 |  | 1.2d | 2017-07-24 | 2017-07-25 | 4 | 0d |  |  | 壮工 [500%] | 48h | 3,200 |
| 6 | 1.1.4 | 开挖槽沟 |  | 6.25d | 2017-07-25 | 2017-08-02 | 5 | 0d |  |  | 壮工 [2400%] | 1200h | 80,000 |
| 7 | 1.2 | **供水工程** |  | 23d | 2017-08-02 | 2017-09-04 |  | 12.5d |  |  |  | 2040h | 133,000 |
| 8 | 1.2.1 | 维修水管 |  | 20d | 2017-08-02 | 2017-08-30 | 6 | 12.5d | 0d |  | 技工 [1200%] | 1920h | 122,000 |
| 9 | 1.2.2 | 压力试验 |  | 3d | 2017-08-30 | 2017-09-04 | 8 | 12.5d | 2d |  | 技工 [500%] | 120h | 6,000 |
| 10 | 1.3 | **电力工程** |  | 55.75d | 2017-07-25 | 2017-10-10 |  | 0d |  |  |  | 6960h | 408,000 |
| 11 | 1.3.1 | 支设新电杆 |  | 18d | 2017-07-25 | 2017-08-18 | 5 | 13.25d |  |  | 壮工 [1000%] | 1440h | 51,000 |
| 12 | 1.3.2 | 铺设电缆 |  | 25d | 2017-08-02 | 2017-09-06 | 6 | 0d |  |  | 技工 [800%] | 1600h | 110,000 |
| 13 | 1.3.3 | 吊装变压器 |  | 7.5d | 2017-09-06 | 2017-09-15 | 11, 12, 16 | 0d |  |  | 技工 [2000%] | 1200h | 120,000 |
| 14 | 1.3.4 | 电力入户 |  | 17d | 2017-09-15 | 2017-10-10 | 13 | 0d |  |  | 技工 [2000%] | 2720h | 127,000 |
| 15 | 1.4 | **道路工程** |  | 45.25d | 2017-07-25 | 2017-09-26 |  | 10.5d |  |  |  | 3456h | 262,900 |
| 16 | 1.4.1 | 剪除树枝 |  | 2d | 2017-07-25 | 2017-07-27 | 5 | 29.25d |  |  | 壮工 [600%] | 96h | 3,900 |
| 17 | 1.4.2 | 复铺路面 |  | 14d | 2017-09-06 | 2017-09-26 | 9, 12 | 10.5d |  |  | 壮工 [3000%] | 3360h | 234,000 |
| 18 | 1.5 | 恢复交通 | milestone | 0d | 2017-10-10 | 2017-10-10 | 14, 17 | 0d |  |  |  |  |  |

Notes:
- 5: 增加2个到5个,缩短工期
- 6: 增加14个到14个，缩短工期
- 13: 增加技工5人到20人缩短工期
