Schedule from MS Project, 2017-07-03 to 2017-11-20, costs in ¥, A marks actual dates.

## Calendars

- 标准: Mon-Fri 08:00-12:00, 13:00-17:00; Sat-Sun off.

## Resources

| Resource | Rate |
| --- | --- |
| 壮工 | 25 |
| 技工 | 37.5 |

## Schedule

| ID | WBS | Task | Type | Duration | Start | Finish | Predecessors | Complete | Remaining | Total slack | Free slack | Constraint | Resources | Work | Actual work | Cost | Actual cost |
| --- | --- | --- | --- | --- | --- | --- | --- | --- | --- | --- | --- | --- | --- | --- | --- | --- | --- |
| 1 | 1 | **道路及配套工程** |  | 100.75d | 2017-07-03 A | 2017-11-20 |  | 66% | 34.48d | 0d |  |  |  | 15080h | 7200h | 896,000 | 352,900 |
| 2 | 1.1 | **准备工作** |  | 65d | 2017-07-03 A | 2017-09-30 A |  | 100% |  |  |  |  |  | 4032h | 4032h | 159,300 | 159,300 |
| 3 | 1.1.1 | 预算报批 |  | 21d | 2017-07-03 A | 2017-07-31 A |  | 100% |  |  |  | start no earlier than 2017-07-03 |  |  |  | 5,000 | 5,000 |
| 4 | 1.1.2 | 对外公告 |  | 22d | 2017-08-02 A | 2017-08-31 A | 3 | 100% |  |  |  |  |  |  |  | 1,500 | 1,500 |
| 5 | 1.1.3 | 开走路上停留的车辆 | milestone | 0d | 2017-08-31 A | 2017-08-31 A | 4 | 100% |  |  |  |  | 壮工 [4000%] |  |  | 2,000 | 2,000 |
| 6 | 1.1.4 | 开挖槽沟 |  | 21d | 2017-09-01 A | 2017-09-30 A | 5 | 100% |  |  |  |  | 壮工 [2400%] | 4032h | 4032h | 150,800 | 150,800 |
| 7 | 1.2 | **供水工程** |  | 29d | 2017-09-01 A | 2017-10-11 |  | 38% | 17.85d | 13.75d |  |  |  | 1080h | 480h | 97,000 | 44,900 |
| 8 | 1.2.1 | 维修水管 |  | 10d | 2017-09-01 A | 2017-10-06 | 6 | 50% | 5d | 13.75d | 0d |  | 技工 [1200%] | 960h | 480h | 86,000 | 43,000 |
| 9 | 1.2.2 | 压力试验 |  | 3d | 2017-10-09 | 2017-10-11 | 8 |  |  | 13.75d | 0d |  | 技工 [500%] | 120h |  | 6,000 |  |
| 10 | 1.3 | **电力工程** |  | 56.75d | 2017-09-01 A | 2017-11-20 |  | 37% | 35.75d | 0d |  |  |  | 5600h | 1680h | 354,000 | 107,000 |
| 11 | 1.3.1 | 支设新电杆 |  | 21d | 2017-09-01 A | 2017-09-30 A | 5 | 100% |  |  |  |  | 壮工 [1000%] | 1680h | 1680h | 57,000 | 57,000 |
| 12 | 1.3.2 | 铺设电缆 | milestone | 0d | 2017-09-30 A | 2017-09-30 A | 6 | 100% |  |  |  |  | 技工 [800%] |  |  | 50,000 | 50,000 |
| 13 | 1.3.3 | 吊装变压器 |  | 18.75d | 2017-10-02 | 2017-10-26 | 11, 12, 16 |  |  | 0d |  |  | 技工 [800%] | 1200h |  | 120,000 |  |
| 14 | 1.3.4 | 电力入户 |  | 17d | 2017-10-26 | 2017-11-20 | 13 |  |  | 0d |  |  | 技工 [2000%] | 2720h |  | 127,000 |  |
| 15 | 1.4 | **道路工程** |  | 43d | 2017-09-01 A | 2017-10-31 |  | 60% | 17.2d | 13.75d |  |  |  | 4368h | 1008h | 285,700 | 41,700 |
| 16 | 1.4.1 | 剪除树枝 |  | 21d | 2017-09-01 A | 2017-09-30 A | 5 | 100% |  |  |  |  | 壮工 [600%] | 1008h | 1008h | 26,700 | 26,700 |
| 17 | 1.4.2 | 复铺路面 |  | 14d | 2017-10-12 | 2017-10-31 | 9, 12 |  |  | 13.75d |  |  | 壮工 [3000%] | 3360h |  | 234,000 |  |
| 18 | 1.5 | 恢复交通 | milestone | 0d | 2017-11-20 | 2017-11-20 | 14, 17 |  |  | 0d |  |  |  |  |  |  |  |

Notes:
- 5: 增加2个到5个,缩短工期 / 第一次监控，最短工期优化增加到40人，缩短工期
- 6: 增加14个到14个，缩短工期
- 13: 增加技工5人到20人缩短工期 / 第三次优化减少到8人,使资源不过分使用
